# PLA-FOR-PlandeTrabajo_Área de QA (Formiik mobile Refactor)

Schedule from MS Project, 2019-08-23 to 2019-10-14, status date 2019-10-31, A marks actual dates.
Plan de Trabajo (Iterativo)
Mobiik

## Calendars

- Estándar: Mon-Fri 09:00-13:00, 15:00-19:00; Sat-Sun off.

## Resources

| Resource |
| --- |
| Ingeniero de Calidad de Software |
| Líder Ingeniero de Calidad de Software |
| Analista de Requerimientos |
| Arquitecto de Software |
| Arquitecto de Soluciones |
| Ingeniero de Software |
| Líder Ingeniero de Software |
| Consultor de Aseguramiento de la Calidad |
| Consultor UX |
| Administrador de Proyectos |
| Analista de Negocio |
| Tester1 |
| Tester2 |
| Tester3 |
| Tester4 |
| Gregor Marciano |
| David Anacona |

## Schedule

| ID | WBS | Task | Type | Duration | Start | Finish | Predecessors | Complete | Remaining | Actual finish | Total slack | Free slack | Constraint | Resources | Work | Actual work |
| --- | --- | --- | --- | --- | --- | --- | --- | --- | --- | --- | --- | --- | --- | --- | --- | --- |
| 1 | 1 | **01-Planeación** |  | 2d | 2019-08-23 09:00 A | 2019-08-26 19:00 |  | 100% |  | 2019-08-23 12:00 |  |  |  |  | 3h | 3h |
| 2 | 1.1 | Generar Plan de Trabajo área de QA | manual | 3h | 2019-08-23 09:00 A | 2019-08-23 12:00 A |  | 100% |  |  |  |  | start no earlier than 2019-08-23 09:00 | Líder Ingeniero de Calidad de Software | 3h | 3h |
| 3 | 2 | **02-Análisis y Diseño** |  | 15d | 2019-08-26 09:00 A | 2019-09-13 19:00 |  | 31% | 10.4d |  |  |  |  |  | 113h | 31h |
| 4 | 2.1 | Sesion de entendimiento equipo de QA (Análisis) |  | 0.5h | 2019-08-26 09:00 A | 2019-08-26 09:30 A |  | 100% |  |  |  |  |  | Tester1; Tester2; Tester3; Tester4; Líder Ingeniero de Calidad de Software | 2h | 2h |
| 5 | 2.2 | Revisar el alcance de las Pruebas con Historias del usuario |  | 0.5d | 2019-09-06 09:00 A | 2019-09-06 13:00 A |  | 100% |  |  |  |  | finish no earlier than 2019-09-09 19:00 | Líder Ingeniero de Calidad de Software | 4h | 4h |
| 6 | 2.3 | Generar plan de prueba |  | 3d? | 2019-09-16 09:00 | 2019-09-18 19:00 | 5, 14, 15, 16, 17, 18, 19, 20, 21, 22, 23, 24, 25, 26 |  |  |  | 18d |  |  | Líder Ingeniero de Calidad de Software | 24h |  |
| 7 | 2.4 | **Identificar testware (casos de prueba, escenarios etc.)** |  | 9d | 2019-08-27 09:00 A | 2019-09-06 19:00 |  | 39% | 5.51d |  |  |  |  |  | 81h | 24h |
| 8 | 2.4.1 | **Diseño de Casos de Prueba** |  | 9d | 2019-08-27 09:00 A | 2019-09-06 19:00 |  | 42% | 5.2d |  |  |  |  |  | 57h | 20h |
| 9 | 2.4.1.1 | Login |  | 1h | 2019-08-27 09:00 A | 2019-08-27 10:00 A |  | 100% |  |  |  |  |  | Tester1 | 1h | 1h |
| 10 | 2.4.1.2 | Actualización de formatos (Automático) | milestone | 1h | 2019-08-27 09:00 A | 2019-08-27 10:00 A |  | 100% |  |  |  |  |  | Tester1 | 1h | 1h |
| 11 | 2.4.1.3 | Actualización de catálogos (Automático) |  | 1h | 2019-08-27 09:00 A | 2019-08-27 10:00 A |  | 100% |  |  |  |  |  | Tester1 | 1h | 1h |
| 12 | 2.4.1.4 | Actualización de órdenes (Automático) | milestone | 8h | 2019-08-27 09:00 A | 2019-08-27 19:00 A |  | 100% |  |  |  |  |  | Tester1 | 1h | 1h |
| 13 | 2.4.1.5 | Actualización de versión (Automático y Manual desde tienda) |  | 0.25d? | 2019-08-27 09:00 | 2019-08-27 11:00 |  |  |  |  | 34.75d |  |  | Tester1 | 2h |  |
| 14 | 2.4.1.6 | **Nuevo UI- Lista de ordenes** |  | 13d | 2019-08-28 09:00 | 2019-09-13 19:00 |  |  |  |  |  |  |  |  | 24h |  |
| 15 | 2.4.1.6.1 | 101- Interface de Ordenes |  | 0.25d? | 2019-09-10 17:00 | 2019-09-10 19:00 |  |  |  |  | 21d | 3d | finish no earlier than 2019-09-10 19:00 | Tester1 | 2h |  |
| 16 | 2.4.1.6.2 | 102 - Sincronización |  | 0.25d? | 2019-09-10 17:00 | 2019-09-10 19:00 |  |  |  |  | 21d | 3d | finish no earlier than 2019-09-10 19:00 | Tester1 | 2h |  |
| 17 | 2.4.1.6.3 | 103 - Búsqueda |  | 0.25d? | 2019-09-10 17:00 | 2019-09-10 19:00 |  |  |  |  | 21d | 3d | finish no earlier than 2019-09-10 19:00 | Tester1 | 2h |  |
| 18 | 2.4.1.6.4 | 104 - Notificaciones |  | 0.25d? | 2019-09-10 17:00 | 2019-09-10 19:00 |  |  |  |  | 21d | 3d | finish no earlier than 2019-09-10 19:00 | Tester1 | 2h |  |
| 19 | 2.4.1.6.5 | 105 - Ordenar Listado Ordenes |  | 0.25d? | 2019-09-10 17:00 | 2019-09-10 19:00 |  |  |  |  | 21d | 3d | finish no earlier than 2019-09-10 19:00 | Tester1 | 2h |  |
| 20 | 2.4.1.6.6 | 106 - Filtrado de Ordenes |  | 0.25d? | 2019-09-10 17:00 | 2019-09-10 19:00 |  |  |  |  | 21d | 3d | finish no earlier than 2019-09-10 19:00 | Tester1 | 2h |  |
| 21 | 2.4.1.6.7 | 107 - Lista de Ordenes |  | 0.25d? | 2019-09-10 17:00 | 2019-09-10 19:00 |  |  |  |  | 21d | 3d | finish no earlier than 2019-09-10 19:00 | Tester1 | 2h |  |
| 22 | 2.4.1.6.8 | 108 - Crear Orden |  | 0.25d? | 2019-09-10 17:00 | 2019-09-10 19:00 |  |  |  |  | 21d | 3d | finish no earlier than 2019-09-10 19:00 | Tester1 | 2h |  |
| 23 | 2.4.1.6.9 | 109 - Seleccion en Masa |  | 0.25d? | 2019-09-10 17:00 | 2019-09-10 19:00 |  |  |  |  | 21d | 3d | finish no earlier than 2019-09-10 19:00 | Tester1 | 2h |  |
| 24 | 2.4.1.6.10 | 110 - Modo Oscuro/Claro |  | 0.25d? | 2019-09-10 17:00 | 2019-09-10 19:00 |  |  |  |  | 21d | 3d | finish no earlier than 2019-09-10 19:00 | Tester1 | 2h |  |
| 25 | 2.4.1.6.11 | 111 - Informacion de Cambios en Ordenes |  | 0.25d? | 2019-09-10 17:00 | 2019-09-10 19:00 |  |  |  |  | 21d | 3d | finish no earlier than 2019-09-10 19:00 | Tester1 | 2h |  |
| 26 | 2.4.1.6.12 | 112 - Menu |  | 0.25d? | 2019-09-10 17:00 | 2019-09-10 19:00 |  |  |  |  | 21d | 3d | finish no earlier than 2019-09-10 19:00 | Tester1 | 2h |  |
| 27 | 2.4.1.7 | Configuración de dispositivo |  | 0.38d? | 2019-08-27 09:00 | 2019-08-27 12:00 |  |  |  |  | 34.62d |  |  | Tester1 | 3h |  |
| 28 | 2.4.1.8 | Reasignación de órdenes |  | 1h | 2019-08-28 09:00 A | 2019-08-28 10:00 A |  | 100% |  |  |  |  | start no earlier than 2019-07-25 09:00 | Tester1 | 1h | 1h |
| 29 | 2.4.1.9 | Guardado parcial |  | 1h | 2019-08-28 09:00 A | 2019-08-28 10:00 A |  | 100% |  |  |  |  | start no earlier than 2019-07-25 09:00 | Tester1 | 1h | 1h |
| 30 | 2.4.1.10 | Editar una orden |  | 1h | 2019-08-29 09:00 A | 2019-08-29 10:00 A |  | 100% |  |  |  |  | start no earlier than 2019-07-25 09:00 | Tester1 | 1h | 1h |
| 31 | 2.4.1.11 | Cancelar una orden |  | 1h | 2019-08-29 09:00 A | 2019-08-29 10:00 A |  | 100% |  |  |  |  | start no earlier than 2019-07-26 09:00 | Tester1 | 1h | 1h |
| 32 | 2.4.1.12 | Guardado completo |  | 2h | 2019-08-29 09:00 A | 2019-08-29 11:00 A |  | 100% |  |  |  |  | start no earlier than 2019-07-26 09:00 | Tester1 | 2h | 2h |
| 33 | 2.4.1.13 | Wiget AudioEdit |  | 1h | 2019-09-09 09:00 A | 2019-09-09 10:00 A |  | 100% |  |  |  |  | finish no earlier than 2019-09-10 19:00 | Tester1 | 1h | 1h |
| 34 | 2.4.1.14 | Encrypt BD |  | 2h | 2019-08-29 09:00 A | 2019-08-29 11:00 A |  | 100% |  |  |  |  | start no earlier than 2019-07-25 09:00 | Tester1 | 2h | 2h |
| 35 | 2.4.1.15 | Asignación de orden sin FormEdit (Pruebas de performance) |  | 2h | 2019-09-09 09:00 A | 2019-09-09 11:00 A |  | 100% |  |  |  |  | finish no earlier than 2019-09-10 19:00 | Tester1 | 2h | 2h |
| 36 | 2.4.1.16 | Asignación de órdenen en paquete(Pruebas de performance) |  | 2h | 2019-09-03 19:00 A | 2019-09-04 11:00 |  |  | 2h |  | 28.75d |  | finish no earlier than 2019-09-10 19:00 | Tester1 | 2h |  |
| 37 | 2.4.1.17 | Asignación de órdenes por servicio(Pruebas de performance) |  | 2h | 2019-09-09 09:00 A | 2019-09-09 11:00 A |  | 100% |  |  |  |  | finish no earlier than 2019-09-10 19:00 | Tester1 | 2h | 2h |
| 38 | 2.4.1.18 | Sesión expirada |  | 1h | 2019-08-30 09:00 A | 2019-08-30 10:00 A |  | 100% |  |  |  |  | start no earlier than 2019-07-24 09:00 | Tester1 | 1h | 1h |
| 39 | 2.4.1.19 | Funcionalidad FormEdit |  | 5h | 2019-09-09 09:00 A | 2019-09-10 19:00 |  | 20% | 4h |  | 24d |  | finish no earlier than 2019-09-10 19:00 | Tester1 | 5h | 1h |
| 40 | 2.4.1.20 | Funcionalidad de Optimizar ruta y/o pasar a ruta |  | 0.12d? | 2019-09-03 18:00 | 2019-09-03 19:00 |  |  |  |  | 29d |  | finish no earlier than 2019-09-03 19:00 | Tester1 | 1h |  |
| 41 | 2.4.1.21 | Funcionalidad de mensajes |  | 0.12d? | 2019-09-10 18:00 | 2019-09-10 19:00 |  |  |  |  | 24d |  | finish no earlier than 2019-09-10 19:00 | Tester1 | 1h |  |
| 42 | 2.4.1.22 | Flujo de una orden |  | 1h | 2019-09-04 09:00 A | 2019-09-04 10:00 A |  | 100% |  |  |  |  | finish no earlier than 2019-09-06 19:00 | Tester1 | 1h | 1h |

| ID | WBS | Task | Type | Duration | Start | Finish | Complete | Remaining | Actual start | Total slack | Constraint | Resources | Work | Actual work |
| --- | --- | --- | --- | --- | --- | --- | --- | --- | --- | --- | --- | --- | --- | --- |
| 43 | 2.4.2 | **Elaborar reportes avance de pruebas** |  | 1d | 2019-09-05 09:00 | 2019-09-05 19:00 | 25% | 0.75d | 2019-09-19 09:00 |  |  | Líder Ingeniero de Calidad de Software | 24h | 4h |
| 44 | 2.4.2.1 | Dashboard Test manager (Test Case) |  | 8h | 2019-09-19 09:00 A | 2019-09-19 19:00 | 25% | 6h |  | 17d |  |  | 8h | 2h |
| 45 | 2.4.2.2 | Dashboard AzureDevops (Seguimiento de errores BUG, Mejoras) |  | 8h | 2019-09-20 09:00 A | 2019-09-20 19:00 | 25% | 6h |  | 16d |  |  | 8h | 2h |
| 46 | 2.5 | 1 era Revisión Matriz Casos prueba |  | 0.33h | 2019-09-19 09:00 A | 2019-09-19 09:20 A | 100% |  |  |  | start no earlier than 2019-07-30 09:00 | Tester1; Tester2; Tester3 | 1h | 1h |
| 47 | 2.6 | 2 era Revisión Matriz Casos prueba (VoBo) |  | 1d? | 2019-09-19 09:00 | 2019-09-19 19:00 |  |  |  | 17d | start no earlier than 2019-09-19 09:00 |  | 1h |  |
| 48 | 3 | **03-Implementación y Ejecución de pruebas QA** |  | 9d | 2019-09-10 09:00 A | 2019-09-20 19:00 | 4% | 8.68d |  |  |  |  | 585.75h | 131.54h |
| 49 | 3.1 | **01-Preparación** |  | 7d | 2019-09-10 09:00 A | 2019-09-18 19:00 | 3% | 6.79d |  |  |  |  | 2h | 1h |
| 50 | 3.1.1 | Generación Formulario Pichincha, Solfi, FDM |  | 0.12d? | 2019-09-10 09:00 | 2019-09-10 10:00 |  |  |  | 24.88d | start no earlier than 2019-09-10 09:00 | Tester1 | 1h |  |
| 51 | 3.1.2 | Generar insumos (Usuarios, formularios, ambientación de pruebas RC ó Prod funcionales etc..) | milestone | 4d | 2019-09-10 09:00 A | 2019-09-13 19:00 | 3% | 3.88d |  | 21d |  | Tester1 | 1h | 1h |
| 52 | 3.2 | **02-Ejecución** |  | 5d | 2019-09-24 09:00 A | 2019-09-30 19:00 | 4% | 4.82d |  |  |  |  | 583.75h | 130.54h |
| 53 | 3.2.1 | **1er Ciclo de Pruebas** |  | 5d? | 2019-09-24 09:00 A | 2019-09-30 19:00 | 4% | 4.81d? |  | 10d |  |  | 370h | 101.48h |
| 54 | 3.2.1.1 | **Pruebas funcionales** |  | 5d | 2019-09-24 09:00 A | 2019-09-30 19:00 | 5% | 4.75d |  |  |  | Tester1; Tester2; Tester3 | 259h | 51.31h |
| 55 | 3.2.1.1.1 | **Pichincha** |  | 5d? | 2019-09-24 09:00 A | 2019-09-30 19:00 | 6% | 4.69d? |  | 10d |  |  | 69.5h | 24.75h |
| 56 | 3.2.1.1.1.1 | Login |  | 1h | 2019-09-24 09:00 A | 2019-09-24 19:00 A | 100% |  |  |  | finish no earlier than 2019-09-30 19:00 | Tester1 | 1h | 1h |
| 57 | 3.2.1.1.1.2 | Actualización de formatos (Automático) | manual | 0.5h | 2019-09-24 09:00 A | 2019-09-24 09:30 A | 100% |  |  |  | start no earlier than 2019-09-24 09:00 | Tester1 | 0.5h | 0.5h |
| 58 | 3.2.1.1.1.3 | Actualización de catálogos (Automático) |  | 0.5h | 2019-09-24 09:00 A | 2019-09-24 09:30 A | 100% |  |  |  | finish no earlier than 2019-09-30 19:00 | Tester1 | 0.5h | 0.5h |
| 59 | 3.2.1.1.1.4 | Actualización de órdenes (Automático) | manual | 0.5h | 2019-09-24 09:00 A | 2019-09-24 09:30 A | 100% |  |  |  | start no earlier than 2019-09-24 09:00 | Tester1 | 0.5h | 0.5h |
| 60 | 3.2.1.1.1.5 | Actualización de versión (Automático) |  | 0.5h | 2019-09-24 09:00 A | 2019-09-30 19:00 | 50% | 0.25h |  | 10d | finish no earlier than 2019-09-30 19:00 | Tester1 | 0.5h | 0.25h |
| 61 | 3.2.1.1.1.6 | **Nuevo UI- Lista de ordenes** |  | 5d | 2019-09-24 09:00 | 2019-09-30 19:00 |  |  |  |  |  |  | 38.5h |  |
| 62 | 3.2.1.1.1.6.1 | 101- Interface de Ordenes |  | 0.25d? | 2019-09-30 17:00 | 2019-09-30 19:00 |  |  |  | 10d | finish no earlier than 2019-09-30 19:00 | Tester1 | 2h |  |
| 63 | 3.2.1.1.1.6.2 | 102 - Sincronización |  | 1d? | 2019-09-30 09:00 | 2019-09-30 19:00 |  |  |  | 10d | finish no earlier than 2019-09-30 19:00 | Tester2 | 8h |  |
| 64 | 3.2.1.1.1.6.3 | 103 - Búsqueda |  | 0.38d? | 2019-09-24 09:00 | 2019-09-24 12:00 |  |  |  | 14.62d | start no earlier than 2019-09-24 09:00 | Tester3 | 3h |  |
| 65 | 3.2.1.1.1.6.4 | 104 - Notificaciones |  | 0.38d? | 2019-09-24 09:00 | 2019-09-24 12:00 |  |  |  | 14.62d | start no earlier than 2019-09-24 09:00 | Tester3 | 3h |  |
| 66 | 3.2.1.1.1.6.5 | 105 - Ordenar Listado Ordenes |  | 0.75d? | 2019-09-24 09:00 | 2019-09-24 17:00 |  |  |  | 14.25d | start no earlier than 2019-09-24 09:00 | Tester4 | 6h |  |
| 67 | 3.2.1.1.1.6.6 | 106 - Filtrado de Ordenes |  | 5d? | 2019-09-24 09:00 | 2019-09-30 19:00 |  |  |  | 10d | start no earlier than 2019-09-24 09:00 |  | 4h |  |
| 68 | 3.2.1.1.1.6.7 | 107 - Lista de Ordenes |  | 5d? | 2019-09-24 09:00 | 2019-09-30 19:00 |  |  |  | 10d | start no earlier than 2019-09-24 09:00 |  | 4h |  |
| 69 | 3.2.1.1.1.6.8 | 108 - Crear Orden |  | 5d? | 2019-09-24 09:00 | 2019-09-30 19:00 |  |  |  | 10d | start no earlier than 2019-09-24 09:00 |  | 4h |  |
| 70 | 3.2.1.1.1.6.9 | 109 - Seleccion en Masa |  | 5d? | 2019-09-24 09:00 | 2019-09-30 19:00 |  |  |  | 10d | start no earlier than 2019-09-24 09:00 |  | 2h |  |
| 71 | 3.2.1.1.1.6.10 | 110 - Modo Oscuro/Claro |  | 5d? | 2019-09-24 09:00 | 2019-09-30 19:00 |  |  |  | 10d | start no earlier than 2019-09-24 09:00 |  | 0.5h |  |
| 72 | 3.2.1.1.1.6.11 | 111 - Informacion de Cambios en Ordenes |  | 5d? | 2019-09-24 09:00 | 2019-09-30 19:00 |  |  |  | 10d | start no earlier than 2019-09-24 09:00 |  | 1h |  |
| 73 | 3.2.1.1.1.6.12 | 112 - Menu |  | 5d? | 2019-09-24 09:00 | 2019-09-30 19:00 |  |  |  | 10d | start no earlier than 2019-09-24 09:00 |  | 1h |  |
| 74 | 3.2.1.1.1.7 | Configuración de dispositivo |  | 1h | 2019-09-24 09:00 A | 2019-09-24 10:00 A | 100% |  |  |  | finish no earlier than 2019-09-30 19:00 |  | 1h | 1h |
| 75 | 3.2.1.1.1.8 | Reasignación de órdenes |  | 1h | 2019-09-24 09:00 A | 2019-09-24 10:00 A | 100% |  |  |  | finish no earlier than 2019-09-30 19:00 |  | 1h | 1h |
| 76 | 3.2.1.1.1.9 | Guardado parcial |  | 1h | 2019-09-24 09:00 A | 2019-09-24 10:00 A | 100% |  |  |  | finish no earlier than 2019-09-30 19:00 |  | 1h | 1h |
| 77 | 3.2.1.1.1.10 | Editar una orden |  | 2h | 2019-09-24 09:00 A | 2019-09-24 11:00 A | 100% |  |  |  | finish no earlier than 2019-09-30 19:00 |  | 2h | 2h |
| 78 | 3.2.1.1.1.11 | Cancelar una orden |  | 1h | 2019-09-24 09:00 A | 2019-09-24 10:00 A | 100% |  |  |  | finish no earlier than 2019-09-30 19:00 |  | 1h | 1h |
| 79 | 3.2.1.1.1.12 | Guardado completo |  | 1h | 2019-09-24 09:00 A | 2019-09-24 10:00 A | 100% |  |  |  | finish no earlier than 2019-09-30 19:00 |  | 1h | 1h |
| 80 | 3.2.1.1.1.13 | Wiget AudioEdit |  | 2h | 2019-09-24 09:00 A | 2019-09-24 11:00 A | 100% |  |  |  | finish no earlier than 2019-09-30 19:00 |  | 2h | 2h |
| 81 | 3.2.1.1.1.14 | Encrypt BD |  | 2h | 2019-09-24 09:00 A | 2019-09-24 11:00 A | 100% |  |  |  | finish no earlier than 2019-09-30 19:00 |  | 2h | 2h |
| 82 | 3.2.1.1.1.15 | Asignación de orden sin FormEdit (Pruebas de performance) |  | 2h | 2019-09-24 09:00 A | 2019-09-24 11:00 A | 100% |  |  |  | finish no earlier than 2019-09-30 19:00 |  | 2h | 2h |
| 83 | 3.2.1.1.1.16 | Asignación de órdenen en paquete(Pruebas de performance) |  | 2h | 2019-09-24 09:00 A | 2019-09-24 11:00 A | 100% |  |  |  | finish no earlier than 2019-09-30 19:00 |  | 2h | 2h |
| 84 | 3.2.1.1.1.17 | Asignación de órdenes por servicio(Pruebas de performance) |  | 2h | 2019-09-24 09:00 A | 2019-09-24 11:00 A | 100% |  |  |  | finish no earlier than 2019-09-30 19:00 |  | 2h | 2h |
| 85 | 3.2.1.1.1.18 | Sesión expirada |  | 1h | 2019-09-24 09:00 A | 2019-09-24 10:00 A | 100% |  |  |  | finish no earlier than 2019-09-30 19:00 |  | 1h | 1h |
| 86 | 3.2.1.1.1.19 | Funcionalidad FormEdit |  | 40h | 2019-09-24 09:00 A | 2019-09-30 19:00 | 5% | 38h |  | 10d | finish no earlier than 2019-09-30 19:00 |  | 4h | 2h |
| 87 | 3.2.1.1.1.20 | Funcionalidad de Optimizar ruta y/o pasar a ruta |  | 2h | 2019-09-24 09:00 A | 2019-09-24 11:00 A | 100% |  |  |  | finish no earlier than 2019-09-30 19:00 |  | 2h | 2h |
| 88 | 3.2.1.1.1.21 | Funcionalidad mensajes |  | 5d? | 2019-09-24 09:00 | 2019-09-30 19:00 |  |  |  | 10d | finish no earlier than 2019-09-30 19:00 |  | 4h |  |

| ID | WBS | Task | Type | Duration | Start | Finish | Complete | Remaining | Total slack | Constraint | Resources | Work | Actual work |
| --- | --- | --- | --- | --- | --- | --- | --- | --- | --- | --- | --- | --- | --- |
| 89 | 3.2.1.1.2 | **Solfi** |  | 5d? | 2019-09-24 09:00 A | 2019-09-30 19:00 | 4% | 4.8d? | 10d |  |  | 69.5h | 23.75h |
| 90 | 3.2.1.1.2.1 | Login |  | 1h | 2019-09-24 09:00 A | 2019-09-24 19:00 A | 100% |  |  | finish no earlier than 2019-09-30 19:00 | Tester4 | 1h | 1h |
| 91 | 3.2.1.1.2.2 | Actualización de formatos (Automático) | manual | 0.5h | 2019-09-24 09:00 A | 2019-09-24 09:30 A | 100% |  |  | start no earlier than 2019-09-24 09:00 | Tester4 | 0.5h | 0.5h |
| 92 | 3.2.1.1.2.3 | Actualización de catálogos (Automático) |  | 0.5h | 2019-09-24 09:00 A | 2019-09-30 17:30 |  | 0.5h | 10.19d | finish no earlier than 2019-09-30 19:00 | Tester4 | 0.5h |  |
| 93 | 3.2.1.1.2.4 | Actualización de órdenes (Automático) | manual | 0.5h | 2019-09-24 09:00 | 2019-09-24 11:30 |  |  |  | start no earlier than 2019-09-24 09:00 | Tester4 | 0.5h |  |
| 94 | 3.2.1.1.2.5 | Actualización de versión (Automático) |  | 0.5h | 2019-09-24 09:00 A | 2019-09-30 19:00 | 50% | 0.25h | 10d | finish no earlier than 2019-09-30 19:00 | Tester4 | 0.5h | 0.25h |
| 95 | 3.2.1.1.2.6 | **Nuevo UI- Lista de ordenes** |  | 5d | 2019-09-24 09:00 | 2019-09-30 19:00 |  |  |  |  |  | 38.5h |  |
| 96 | 3.2.1.1.2.6.1 | 101- Interface de Ordenes |  | 5d? | 2019-09-24 09:00 | 2019-09-30 19:00 |  |  | 10d | finish no earlier than 2019-09-30 19:00 |  | 2h |  |
| 97 | 3.2.1.1.2.6.2 | 102 - Sincronización |  | 5d? | 2019-09-24 09:00 | 2019-09-30 19:00 |  |  | 10d | finish no earlier than 2019-09-30 19:00 |  | 8h |  |
| 98 | 3.2.1.1.2.6.3 | 103 - Búsqueda |  | 5d? | 2019-09-24 09:00 | 2019-09-30 19:00 |  |  | 10d | start no earlier than 2019-09-24 09:00 |  | 3h |  |
| 99 | 3.2.1.1.2.6.4 | 104 - Notificaciones |  | 5d? | 2019-09-24 09:00 | 2019-09-30 19:00 |  |  | 10d | start no earlier than 2019-09-24 09:00 |  | 3h |  |
| 100 | 3.2.1.1.2.6.5 | 105 - Ordenar Listado Ordenes |  | 5d? | 2019-09-24 09:00 | 2019-09-30 19:00 |  |  | 10d | start no earlier than 2019-09-24 09:00 |  | 6h |  |
| 101 | 3.2.1.1.2.6.6 | 106 - Filtrado de Ordenes |  | 5d? | 2019-09-24 09:00 | 2019-09-30 19:00 |  |  | 10d | start no earlier than 2019-09-24 09:00 |  | 4h |  |
| 102 | 3.2.1.1.2.6.7 | 107 - Lista de Ordenes |  | 5d? | 2019-09-24 09:00 | 2019-09-30 19:00 |  |  | 10d | start no earlier than 2019-09-24 09:00 |  | 4h |  |
| 103 | 3.2.1.1.2.6.8 | 108 - Crear Orden |  | 5d? | 2019-09-24 09:00 | 2019-09-30 19:00 |  |  | 10d | start no earlier than 2019-09-24 09:00 |  | 4h |  |
| 104 | 3.2.1.1.2.6.9 | 109 - Seleccion en Masa |  | 5d? | 2019-09-24 09:00 | 2019-09-30 19:00 |  |  | 10d | start no earlier than 2019-09-24 09:00 |  | 2h |  |
| 105 | 3.2.1.1.2.6.10 | 110 - Modo Oscuro/Claro |  | 5d? | 2019-09-24 09:00 | 2019-09-30 19:00 |  |  | 10d | start no earlier than 2019-09-24 09:00 |  | 0.5h |  |
| 106 | 3.2.1.1.2.6.11 | 111 - Informacion de Cambios en Ordenes |  | 5d? | 2019-09-24 09:00 | 2019-09-30 19:00 |  |  | 10d | start no earlier than 2019-09-24 09:00 |  | 1h |  |
| 107 | 3.2.1.1.2.6.12 | 112 - Menu |  | 5d? | 2019-09-24 09:00 | 2019-09-30 19:00 |  |  | 10d | start no earlier than 2019-09-24 09:00 |  | 1h |  |
| 108 | 3.2.1.1.2.7 | Configuración de dispositivo |  | 1h | 2019-09-24 09:00 A | 2019-09-24 10:00 A | 100% |  |  | finish no earlier than 2019-09-30 19:00 |  | 1h | 1h |
| 109 | 3.2.1.1.2.8 | Reasignación de órdenes |  | 1h | 2019-09-24 09:00 A | 2019-09-24 10:00 A | 100% |  |  | finish no earlier than 2019-09-30 19:00 |  | 1h | 1h |
| 110 | 3.2.1.1.2.9 | Guardado parcial |  | 1h | 2019-09-24 09:00 A | 2019-09-24 10:00 A | 100% |  |  | finish no earlier than 2019-09-30 19:00 |  | 1h | 1h |
| 111 | 3.2.1.1.2.10 | Editar una orden |  | 2h | 2019-09-24 09:00 A | 2019-09-24 11:00 A | 100% |  |  | finish no earlier than 2019-09-30 19:00 |  | 2h | 2h |
| 112 | 3.2.1.1.2.11 | Cancelar una orden |  | 1h | 2019-09-24 09:00 A | 2019-09-24 10:00 A | 100% |  |  | finish no earlier than 2019-09-30 19:00 |  | 1h | 1h |
| 113 | 3.2.1.1.2.12 | Guardado completo |  | 1h | 2019-09-24 09:00 A | 2019-09-24 10:00 A | 100% |  |  | finish no earlier than 2019-09-30 19:00 |  | 1h | 1h |
| 114 | 3.2.1.1.2.13 | Wiget AudioEdit |  | 2h | 2019-09-24 09:00 A | 2019-09-24 11:00 A | 100% |  |  | finish no earlier than 2019-09-30 19:00 |  | 2h | 2h |
| 115 | 3.2.1.1.2.14 | Encrypt BD |  | 2h | 2019-09-24 09:00 A | 2019-09-24 11:00 A | 100% |  |  | finish no earlier than 2019-09-30 19:00 |  | 2h | 2h |
| 116 | 3.2.1.1.2.15 | Asignación de orden sin FormEdit (Pruebas de performance) |  | 2h | 2019-09-24 09:00 A | 2019-09-24 11:00 A | 100% |  |  | finish no earlier than 2019-09-30 19:00 |  | 2h | 2h |
| 117 | 3.2.1.1.2.16 | Asignación de órdenen en paquete(Pruebas de performance) |  | 2h | 2019-09-24 09:00 A | 2019-09-24 11:00 A | 100% |  |  | finish no earlier than 2019-09-30 19:00 |  | 2h | 2h |
| 118 | 3.2.1.1.2.17 | Asignación de órdenes por servicio(Pruebas de performance) |  | 2h | 2019-09-24 09:00 A | 2019-09-24 11:00 A | 100% |  |  | finish no earlier than 2019-09-30 19:00 |  | 2h | 2h |
| 119 | 3.2.1.1.2.18 | Sesión expirada |  | 1h | 2019-09-24 09:00 A | 2019-09-24 10:00 A | 100% |  |  | finish no earlier than 2019-09-30 19:00 |  | 1h | 1h |
| 120 | 3.2.1.1.2.19 | Funcionalidad FormEdit |  | 40h | 2019-09-24 09:00 A | 2019-09-30 19:00 | 5% | 38h | 10d | finish no earlier than 2019-09-30 19:00 |  | 4h | 2h |
| 121 | 3.2.1.1.2.20 | Funcionalidad de Optimizar ruta y/o pasar a ruta |  | 2h | 2019-09-24 09:00 A | 2019-09-24 11:00 A | 100% |  |  | finish no earlier than 2019-09-30 19:00 |  | 2h | 2h |
| 122 | 3.2.1.1.2.21 | Funcionalidad mensajes |  | 5d? | 2019-09-24 09:00 | 2019-09-30 19:00 |  |  | 10d | finish no earlier than 2019-09-30 19:00 |  | 4h |  |

| ID | WBS | Task | Type | Duration | Start | Finish | Complete | Remaining | Total slack | Constraint | Resources | Work | Actual work |
| --- | --- | --- | --- | --- | --- | --- | --- | --- | --- | --- | --- | --- | --- |
| 123 | 3.2.1.2 | **Pruebas de performance (Con Android Studio)** |  | 5d | 2019-09-24 09:00 A | 2019-09-30 19:00 | 1% | 4.93d |  |  | Tester4 | 111h | 50.17h |
| 124 | 3.2.1.2.1 | **Solfi** |  | 5d? | 2019-09-24 09:00 A | 2019-09-30 19:00 | 1% | 4.93d? | 10d |  |  | 71h | 10.17h |
| 125 | 3.2.1.2.1.1 | Actualización de formatos (Automático) |  | 1h | 2019-09-24 09:00 A | 2019-09-24 10:00 A | 100% |  |  | finish no earlier than 2019-09-30 19:00 | Tester4 | 1h | 1h |
| 126 | 3.2.1.2.1.2 | Actualización de catálogos (Automático) |  | 1h | 2019-09-24 09:00 A | 2019-09-24 10:00 A | 100% |  |  | finish no earlier than 2019-09-30 19:00 | Tester4 | 1h | 1h |
| 127 | 3.2.1.2.1.3 | Actualización de órdenes (Automático) |  | 1h | 2019-09-24 09:00 A | 2019-09-24 10:00 A | 100% |  |  | finish no earlier than 2019-09-30 19:00 | Tester4 | 1h | 1h |
| 128 | 3.2.1.2.1.4 | Actualización de versión (Automático) |  | 1h | 2019-09-24 09:00 A | 2019-09-24 10:00 A | 100% |  |  | finish no earlier than 2019-09-30 19:00 | Tester4 | 1h | 1h |
| 129 | 3.2.1.2.1.5 | **Nuevo UI- Lista de ordenes** |  | 5d | 2019-09-24 09:00 A | 2019-09-30 19:00 | 2% | 4.88d |  |  | Tester4 | 53h | 6.17h |
| 130 | 3.2.1.2.1.5.1 | 102 - Sincronización |  | 8h | 2019-09-24 09:00 A | 2019-09-30 19:00 | 38% | 5h | 10d | finish no earlier than 2019-09-30 19:00 | Tester4 | 8h | 3h |
| 131 | 3.2.1.2.1.5.2 | 108 Crear una orden |  | 5d? | 2019-09-24 09:00 | 2019-09-30 19:00 |  |  | 10d | start no earlier than 2019-09-24 09:00 |  | 2h |  |
| 132 | 3.2.1.2.1.5.3 | 106 - Filtrado de Ordenes |  | 5d? | 2019-09-24 09:00 | 2019-09-30 19:00 |  |  | 10d | start no earlier than 2019-09-24 09:00 |  | 2h |  |
| 133 | 3.2.1.2.1.5.4 | 109 - Seleccion en Masa |  | 5d? | 2019-09-24 09:00 | 2019-09-30 19:00 |  |  | 10d | start no earlier than 2019-09-24 09:00 |  | 1h |  |
| 134 | 3.2.1.2.1.6 | Reasignación y originar una órden |  | 5d? | 2019-09-24 09:00 | 2019-09-30 19:00 |  |  | 10d | start no earlier than 2019-09-24 09:00 |  | 1h |  |
| 135 | 3.2.1.2.1.7 | Guardado parcial |  | 5d? | 2019-09-24 09:00 | 2019-09-30 19:00 |  |  | 10d | start no earlier than 2019-09-24 09:00 |  | 1h |  |
| 136 | 3.2.1.2.1.8 | Editar una orden |  | 5d? | 2019-09-24 09:00 | 2019-09-30 19:00 |  |  | 10d | start no earlier than 2019-09-24 09:00 |  | 2h |  |
| 137 | 3.2.1.2.1.9 | Cancelar una orden |  | 5d? | 2019-09-24 09:00 | 2019-09-30 19:00 |  |  | 10d | start no earlier than 2019-09-24 09:00 |  | 1h |  |
| 138 | 3.2.1.2.1.10 | Guardado completo |  | 5d? | 2019-09-24 09:00 | 2019-09-30 19:00 |  |  | 10d | start no earlier than 2019-09-24 09:00 |  | 1h |  |
| 139 | 3.2.1.2.1.11 | Asignación de orden sin FormEdit (Pruebas de performance) |  | 5d? | 2019-09-24 09:00 | 2019-09-30 19:00 |  |  | 10d | start no earlier than 2019-09-24 09:00 |  | 2h |  |
| 140 | 3.2.1.2.1.12 | Asignación de órdenen en paquete(Pruebas de performance) |  | 5d? | 2019-09-24 09:00 | 2019-09-30 19:00 |  |  | 10d | start no earlier than 2019-09-24 09:00 |  | 2h |  |
| 141 | 3.2.1.2.1.13 | Asignación de órdenes por servicio(Pruebas de performance) |  | 5d? | 2019-09-24 09:00 | 2019-09-30 19:00 |  |  | 10d | start no earlier than 2019-09-24 09:00 |  | 2h |  |
| 142 | 3.2.1.2.1.14 | Funcionalidad de Optimizar ruta y/o pasar a ruta |  | 5d? | 2019-09-24 09:00 | 2019-09-30 19:00 |  |  | 10d | start no earlier than 2019-09-24 09:00 |  | 2h |  |
| 143 | 3.2.2 | **2do Ciclo de pruebas (QA + UAT)** |  | 6d | 2019-10-01 09:00 A | 2019-10-08 19:00 | 3% | 5.79d |  |  |  | 213.75h | 29.06h |
| 144 | 3.2.2.1 | **Pruebas regresión** |  | 6d | 2019-10-01 09:00 A | 2019-10-08 19:00 | 4% | 5.78d |  |  | Tester1; Tester2; Tester3 | 213.75h | 29.06h |
| 145 | 3.2.2.1.1 | Login |  | 1h | 2019-10-01 09:00 A | 2019-10-01 19:00 | 99% | 0h | 9d | finish no earlier than 2019-10-08 19:00 | Tester1; Tester2; Tester3; Tester4 | 1h | 1h |
| 146 | 3.2.2.1.2 | Actualización de formatos (Automático) | manual | 2h | 2019-10-01 09:00 A | 2019-10-01 11:00 | 50% | 1h |  | start no earlier than 2019-10-01 09:00 | Tester1; Tester2; Tester3; Tester4 | 1h | 1h |
| 147 | 3.2.2.1.3 | Actualización de catálogos (Automático) |  | 1h | 2019-10-01 09:00 A | 2019-10-01 11:00 | 99% | 0h | 9.75d | finish no earlier than 2019-10-08 19:00 | Tester1; Tester2; Tester3; Tester4 | 1h | 1h |
| 148 | 3.2.2.1.4 | Actualización de órdenes (Automático) | manual | 2h | 2019-10-01 09:00 A | 2019-10-01 11:00 | 50% | 1h |  | start no earlier than 2019-10-01 09:00 | Tester1; Tester2; Tester3; Tester4 | 1h | 1h |
| 149 | 3.2.2.1.5 | Actualización de versión (Automático) |  | 0.06h | 2019-10-01 09:00 A | 2019-10-01 09:03 A | 100% |  |  | finish no earlier than 2019-10-08 19:00 | Tester1; Tester2; Tester3; Tester4 | 0.25h | 0.25h |

| ID | WBS | Task | Duration | Start | Finish | Complete | Remaining | Total slack | Constraint | Work | Actual work |
| --- | --- | --- | --- | --- | --- | --- | --- | --- | --- | --- | --- |
| 150 | 3.2.2.1.6 | **Nuevo UI- Lista de ordenes** | 6d | 2019-10-01 09:00 | 2019-10-08 19:00 |  |  |  |  | 37.5h |  |
| 151 | 3.2.2.1.6.1 | 101- Interface de Ordenes | 6d? | 2019-10-01 09:00 | 2019-10-08 19:00 |  |  | 4d | finish no earlier than 2019-10-08 19:00 | 1h |  |
| 152 | 3.2.2.1.6.2 | 102 - Sincronización | 6d? | 2019-10-01 09:00 | 2019-10-08 19:00 |  |  | 4d | finish no earlier than 2019-10-08 19:00 | 8h |  |
| 153 | 3.2.2.1.6.3 | 103 - Búsqueda | 6d? | 2019-10-01 09:00 | 2019-10-08 19:00 |  |  | 4d | finish no earlier than 2019-10-08 19:00 | 3h |  |
| 154 | 3.2.2.1.6.4 | 104 - Notificaciones | 6d? | 2019-10-01 09:00 | 2019-10-08 19:00 |  |  | 4d | finish no earlier than 2019-10-08 19:00 | 3h |  |
| 155 | 3.2.2.1.6.5 | 105 - Ordenar Listado Ordenes | 6d? | 2019-10-01 09:00 | 2019-10-08 19:00 |  |  | 4d | finish no earlier than 2019-10-08 19:00 | 6h |  |
| 156 | 3.2.2.1.6.6 | 106 - Filtrado de Ordenes | 6d? | 2019-10-01 09:00 | 2019-10-08 19:00 |  |  | 4d | finish no earlier than 2019-10-08 19:00 | 4h |  |
| 157 | 3.2.2.1.6.7 | 107 - Lista de Ordenes | 6d? | 2019-10-01 09:00 | 2019-10-08 19:00 |  |  | 4d | finish no earlier than 2019-10-08 19:00 | 4h |  |
| 158 | 3.2.2.1.6.8 | 108 - Crear Orden | 6d? | 2019-10-01 09:00 | 2019-10-08 19:00 |  |  | 4d | finish no earlier than 2019-10-08 19:00 | 4h |  |
| 159 | 3.2.2.1.6.9 | 109 - Seleccion en Masa | 6d? | 2019-10-01 09:00 | 2019-10-08 19:00 |  |  | 4d | finish no earlier than 2019-10-08 19:00 | 2h |  |
| 160 | 3.2.2.1.6.10 | 110 - Modo Oscuro/Claro | 6d? | 2019-10-01 09:00 | 2019-10-08 19:00 |  |  | 4d | finish no earlier than 2019-10-08 19:00 | 0.5h |  |
| 161 | 3.2.2.1.6.11 | 111 - Informacion de Cambios en Ordenes | 6d? | 2019-10-01 09:00 | 2019-10-08 19:00 |  |  | 4d | finish no earlier than 2019-10-08 19:00 | 1h |  |
| 162 | 3.2.2.1.6.12 | 112 - Menu | 6d? | 2019-10-01 09:00 | 2019-10-08 19:00 |  |  | 4d | finish no earlier than 2019-10-08 19:00 | 1h |  |
| 163 | 3.2.2.1.7 | Configuración de dispositivo | 1h | 2019-10-01 09:00 A | 2019-10-01 10:00 A | 100% |  |  | finish no earlier than 2019-10-08 19:00 | 1h | 1h |
| 164 | 3.2.2.1.8 | Reasignación de órdenes | 1h | 2019-10-01 09:00 A | 2019-10-01 10:00 A | 100% |  |  | finish no earlier than 2019-10-08 19:00 | 1h | 1h |
| 165 | 3.2.2.1.9 | Guardado parcial | 1h | 2019-10-01 09:00 A | 2019-10-01 10:00 A | 100% |  |  | finish no earlier than 2019-10-08 19:00 | 1h | 1h |
| 166 | 3.2.2.1.10 | Editar una orden | 2h | 2019-10-01 09:00 A | 2019-10-01 11:00 A | 100% |  |  | finish no earlier than 2019-10-08 19:00 | 2h | 2h |
| 167 | 3.2.2.1.11 | Cancelar una orden | 1h | 2019-10-01 09:00 A | 2019-10-01 10:00 A | 100% |  |  | finish no earlier than 2019-10-08 19:00 | 1h | 1h |
| 168 | 3.2.2.1.12 | Guardado completo | 1h | 2019-10-01 09:00 A | 2019-10-01 10:00 A | 100% |  |  | finish no earlier than 2019-10-08 19:00 | 1h | 1h |
| 169 | 3.2.2.1.13 | Wiget AudioEdit | 2h | 2019-10-01 09:00 A | 2019-10-01 11:00 A | 100% |  |  | finish no earlier than 2019-10-08 19:00 | 2h | 2h |
| 170 | 3.2.2.1.14 | Encrypt BD | 2h | 2019-10-01 09:00 A | 2019-10-01 11:00 A | 100% |  |  | finish no earlier than 2019-10-08 19:00 | 2h | 2h |
| 171 | 3.2.2.1.15 | Asignación de orden sin FormEdit (Pruebas de performance) | 2h | 2019-10-01 09:00 A | 2019-10-01 11:00 A | 100% |  |  | finish no earlier than 2019-10-08 19:00 | 2h | 2h |
| 172 | 3.2.2.1.16 | Asignación de órdenen en paquete(Pruebas de performance) | 2h | 2019-10-01 09:00 A | 2019-10-01 11:00 A | 100% |  |  | finish no earlier than 2019-10-08 19:00 | 2h | 2h |
| 173 | 3.2.2.1.17 | Asignación de órdenes por servicio(Pruebas de performance) | 2h | 2019-10-01 09:00 A | 2019-10-01 11:00 A | 100% |  |  | finish no earlier than 2019-10-08 19:00 | 2h | 2h |
| 174 | 3.2.2.1.18 | Sesión expirada | 1h | 2019-10-01 09:00 A | 2019-10-01 10:00 A | 100% |  |  | finish no earlier than 2019-10-08 19:00 | 1h | 1h |
| 175 | 3.2.2.1.19 | Funcionalidad FormEdit | 48h | 2019-10-01 09:00 A | 2019-10-08 19:00 | 4% | 46h | 4d | finish no earlier than 2019-10-08 19:00 | 4h | 2h |
| 176 | 3.2.2.1.20 | Funcionalidad de Optimizar ruta y/o pasar a ruta | 2h | 2019-10-01 09:00 A | 2019-10-01 11:00 A | 100% |  |  | finish no earlier than 2019-10-08 19:00 | 2h | 2h |
| 177 | 3.2.2.1.21 | Funcionalidad mensajes | 6d? | 2019-10-01 09:00 | 2019-10-08 19:00 |  |  | 4d | finish no earlier than 2019-10-08 19:00 | 4h |  |
| 178 | 3.2.2.2 | Seguimiento de errores | 6d? | 2019-10-01 09:00 | 2019-10-08 19:00 |  |  | 4d | start no earlier than 2019-10-01 09:00 |  |  |
| 179 | 3.2.3 | 3er Ciclo de pruebas (Acompañamiento UAT) | 4d? | 2019-10-08 09:00 | 2019-10-11 19:00 |  |  | 1d | finish no earlier than 2019-10-11 19:00 |  |  |

| ID | WBS | Task | Type | Duration | Start | Finish | Complete | Remaining | Total slack | Constraint | Work | Actual work |
| --- | --- | --- | --- | --- | --- | --- | --- | --- | --- | --- | --- | --- |
| 180 | 4 | **04-Cierre** |  | 1d | 2019-10-11 09:00 A | 2019-10-11 19:00 | 31% | 0.69d |  |  | 5h | 5h |
| 181 | 4.1 | Reporte final de defectos y pruebas | milestone | 2d | 2019-10-11 09:00 A | 2019-10-14 19:00 | 31% | 1.38d | 0d | finish no earlier than 2019-10-14 19:00 | 5h | 5h |
